# Yüzme Havuzu

Schedule from MS Project, 2021-01-04 to 2022-06-08, costs in ₺, A marks actual dates.

## Calendars

- Standart: Mon-Fri 08:00-12:00, 13:00-17:00; Sat-Sun off. Exceptions (off unless hours are given): 2021-01-09 to 2023-03-04 08:00-12:00, 13:00-17:00 (Cumartesi, recurring), 2021-04-23 to 2041-04-23 (23 Nisan , recurring), 2021-05-01 to 2024-05-01 (1 Mayıs İşçi Bayramı, recurring), 2021-05-12 to 2021-05-14 (Ramazan Bayramı), 2021-05-19 to 2030-05-19 (19 Mayıs, recurring), 2021-07-15 to 2027-07-15 (15 Temmuz, recurring), 2021-07-19 to 2021-07-24 (Kurban Bayramı), 2021-08-30 to 2024-08-30 (30 Ağustos Zafer Bayramı, recurring), 2021-10-29 to 2024-10-29 (29 Ekim, recurring), 2022-01-01 to 2025-01-01 (1 Ocak Yılbaşı, recurring), 2022-05-01 to 2022-05-04 (Ramazan Bayramı (2022)).

## Resources

| Resource | Unit | Rate |
| --- | --- | --- |
| İnşaat kumu | 10 M2 | 1200 |
| Ahşap | M2 | 20 |
| Alçı | M2 | 35 |
| Alüminyum | Kg | 33.6 |
| Kısa boru | Adet | 10 |
| Uzun boru | Adet | 35 |
| Çimento | Kg | 0.9 |
| Demir | Ton | 5500 |
| Çelik | Ton | 6300 |
| Gaz beton | M3 | 17.43 |
| Hazır beton | M3 | 195 |
| Kireç | 25 Kg | 13.5 |
| Seramik | M2 | 47.5 |
| Tuğla | Adet | 0.41 |
| Kiremit | Adet | 2.85 |
| Drenaj borusu | 50 M | 2450 |
| Plywood | Adet | 225 |
| Mıcır | Ton | 25 |
| Curuf | Ton | 180 |
| Mobil vinç |  | 150 |
| Kulvar Halatı | M | 2.25 |
| Başlangıç Platformu | Adet | 600 |
| Geri dönüş işaretleri | Adet | 20 |
| Mikrofon | Adet | 20537 |
| Transduser | Adet | 500 |
| Güvenlik Ekipmanları | Adet | 17520 |
| Scoreboard | Adet | 4500 |
| Ses sistemi | Adet | 88451 |
| Temizlik Kepçesi | Adet | 225 |
| Havuz Merdiveni | Adet | 2664.56 |
| Süpürge-Fırça Sapları | Adet | 500 |
| Döşeme Fırçaları | Adet | 200 |
| Vakum Hortumu | Adet | 211 |
| Vakum Adaptörü | Adet | 127 |
| Su pompası | Adet | 1239 |
| Kimyasal test malzemeleri | Adet | 1336 |
| Havuz Yalıtım Malzemesi | Adet | 3000 |
| Dalış Tahtası | Adet | 4200 |
| Kış Bakım İlacı | Kg | 24 |
| Duvar Seramikleri | M2 | 75 |
| Yansıtıcı Folyo | Adet | 10 |
| Fayans | Adet | 30 |
| Kapılar | Adet | 550 |
| Isıtıcılar | Adet | 3300 |
| Kablolar | M | 5 |
| Sauna Kovaları | Adet | 299 |
| Kepçeler | Adet | 84 |
| Saatler | Adet | 75 |
| Higrometre | Adet | 586 |
| Termometre | Adet | 180 |
| Havlu Askısı | Adet | 25 |
| Mentol Sıvısı | Litre | 168.5 |
| Koşu bandı | Adet | 3385 |
| Kondinasyon Bisikleti | Adet | 1686 |
| Serbest ağırlık makineleri | Adet | 5000 |
| Ağırlık istasyonları | Adet | 42500 |
| Ağırlık sehpaları | Adet | 450 |
| Serbest ağırlık | Adet | 1200 |
| Pilates ürünleri | Adet | 250 |
| Vücut geliştirme aletleri | Adet | 3170 |
| Buhar Odası Jeneratörü | Adet | 70000 |
| Buhar Çıkış Ağzı | Adet | 450 |
| Cam kapı | Adet | 3594 |
| Masaj Masası | Adet | 700 |
| Cilt Bakım Etejeri | Adet | 450 |
| Cilt Bakım Taburesi | Adet | 450 |
| Masaj Yağı | Litre | 325 |
| Spa Dinlenme Yatağı | Adet | 3500 |
| Ortopedik Masaj Yastığı | Adet | 193 |
| Mum | Adet | 5 |
| Havlu | Adet | 25 |
| Büyük Dolap | Adet | 1200 |
| Bank | Adet | 230 |
| Duş kabini | Adet | 300 |
| Çöp kutusu | Adet | 50 |
| Askı | Adet | 3.5 |
| Tuvalet malzemeleri | Adet | 750 |
| Klozet | Adet | 500 |
| Klozet kabini | Adet | 340 |
| Tribün koltukları | Adet | 36 |
| Engelliler için özel koltuk | Adet | 86 |
| Televizyon | Adet | 2700 |
| Minibar | Adet | 750 |
| Mobilya | Adet | 12300 |
| Kahve makinası | Adet | 5000 |
| Portmanto | Adet | 650 |
| Kilitli dolap | Adet | 1500 |
| Çift Kapılı dolap | Adet | 600 |
| Camlı ilaç dolabı | Adet | 339 |
| Otoskop | Adet | 150 |
| Oftalmoskop | Adet | 165 |
| Mobil Aspiratör | Adet | 430 |
| Sağlık Malzemeleri | Adet | 625 |
| Muayene Masası | Adet | 497 |
| Portatif Katlanır Sedye | Adet | 565 |
| Paravan | Adet | 260 |
| Dijital Baskül | Adet | 45 |
| Tekerlekli sandalye | Adet | 502 |
| Doktor masası | Adet | 250 |
| Doktor koltuğu | Adet | 200 |
| Tıbbi atık kovası | Adet | 175 |
| Işık kaynağı | Adet | 120 |
| Lavabo | Adet | 360 |
| Masa | Adet | 250 |
| Dolap | Adet | 1230 |
| Koltuk | Adet | 1250 |
| Su sebili | Adet | 1460 |
| Boy Aynası | Adet | 130 |
| Büyük Masa | Adet | 500 |
| Sandalye | Adet | 95 |
| Bilgisayar | Adet | 7500 |
| Raf | Adet | 30 |
| Temizlik malzemeleri | Adet | 1200 |
| Pisuar | Adet | 336 |
| Sensörlü Çeşme | Adet | 460 |
| Ayna | Adet | 115 |
| Engelliler için destek üniteleri | Adet | 450 |
| Mutfak tezgahı | Adet | 2320 |
| Mutfak malzemeleri | Adet | 4150 |
| Ofis araç gereçleri | Adet | 2500 |
| Çevre Mühendisi |  | 35 |
| İnşaat Mühendisi |  | 65 |
| Elektrik Elektronik Mühendisi |  | 65 |
| Mimar |  | 75 |
| İç Mimar |  | 75 |
| Muhasebeci |  | 45 |
| Tesisatçı |  | 35 |
| İş Güvenlik Uzmanı |  | 55 |
| İnşaat İşçisi |  | 35 |
| Güvenlik |  | 35 |
| Doktor |  | 85 |
| Anonsör |  | 60 |
| Eğitmen |  | 70 |
| Masör |  | 55 |
| Ofis Çalışanları |  | 55 |
| Bakım Onarım Şefi |  | 55 |
| Bakım Onarım İşçisi |  | 45 |
| Temizlik Görevlisi |  | 35 |
| Endüstri Mühendisi |  | 110 |
| İnsan Kaynakları Yöneticisi |  | 50 |
| Medya Departmanı |  | 75 |
| Yönetim |  | 190 |
| Yönetici |  | 130 |
| İnşaat İzni |  |  |
| Evrak |  |  |
| Kağıt |  |  |
| Tedarikçi |  |  |
| Elektrik Kablosu | M | 20 |
| İnternet Kablosu | M | 30 |
| Elektrik Sigortası | Adet | 11.72 |
| Isı Yalıtım Levhası | Adet | 148 |
| İzolasyon Bandı | M | 1.25 |
| Elektrik motor | Adet | 900 |
| Havuz Isıtıcısı | Adet | 12000 |
| Yerden Isıtma Boruları | M | 1500 |
| Petek |  | 2500 |
| Montaj İşçisi |  | 35 |
| Pencere | Adet | 350 |
| Teleskopik | Adet | 36.5 |
| Jakuzi | Adet | 10912 |
| Kazı Çalışmaları |  |  |
| Hafriyat Nakliyesi |  |  |
| Boyacı |  | 45 |
| Havuz Kimyasalları | Adet | 585.58 |
| Havuz Pompası |  | 4354 |
| Askılık | Adet | 300 |
| Havuz Izgarası | M | 54.6 |
| Mozaik | M2 | 20 |

## Schedule

| ID | WBS | Task | Duration | Start | Finish | Predecessors | Complete | Baseline start | Baseline finish | Baseline duration | Constraint | Resources | Work | Actual work | Cost | Actual cost |
| --- | --- | --- | --- | --- | --- | --- | --- | --- | --- | --- | --- | --- | --- | --- | --- | --- |
| 1 | 1 | **Proje Süresi** | 426d | 2021-01-04 A | 2022-06-08 A |  | 100% |  |  |  |  |  | 15440h | 15440h | 24,037,941.67 | 23,957,141.67 |
| 2 | 1.1 | **İş Planı Çıkarma** | 97d | 2021-01-04 A | 2021-04-27 A |  | 100% | 2021-01-04 | 2021-01-18 | 11d |  |  | 1864h | 1864h | 23,027,625.48 | 23,017,625.48 |
| 3 | 1.1.1 | Yapılış amacının belirlenmesi | 3d | 2021-01-04 A | 2021-01-06 A |  | 100% | 2021-01-04 | 2021-01-05 | 2d |  | Endüstri Mühendisi; Yönetim | 48h | 48h | 7,200 | 7,200 |
| 4 | 1.1.2 | Yönetici ataması | 6d | 2021-01-07 A | 2021-01-13 A | 3 | 100% |  |  |  |  | İnsan Kaynakları Yöneticisi; Yönetim | 80h | 80h | 9,600 | 9,600 |
| 5 | 1.1.3 | Bölge seçimi | 12d | 2021-02-04 A | 2021-02-17 A | 204 | 100% | 2021-01-06 | 2021-01-07 | 2d | start no earlier than 2021-01-25 | Yönetim; Endüstri Mühendisi; Yönetici | 240h | 240h | 34,400 | 34,400 |
| 6 | 1.1.4 | Başlangıç-Bitiş Tarihinin belirlenmesi | 4d | 2021-02-18 A | 2021-02-22 A | 5 | 100% | 2021-01-08 | 2021-01-13 | 4d |  | Endüstri Mühendisi; Yönetim; Yönetici | 72h | 72h | 10,320 | 10,320 |
| 7 | 1.1.5 | İnşaat yapımı için izinlerin çıkartılması | 30d | 2021-02-23 A | 2021-03-29 A | 6 | 100% | 2021-02-26 | 2021-02-26 | 1d |  | İnşaat Mühendisi; Evrak [0.1%]; İnşaat İzni [0.1%] | 240h | 240h | 25,600 | 15,600 |
| 8 | 1.1.6 | Hazırlık Çalışması | 6d | 2021-04-20 A | 2021-04-27 A | 194 | 100% | 2021-03-02 | 2021-03-02 | 1d | start no earlier than 2021-04-05 | Çevre Mühendisi; Elektrik Elektronik Mühendisi; Endüstri Mühendisi; İç Mimar; İnşaat Mühendisi; Mimar; Muhasebeci; İnşaat İşçisi | 384h | 384h | 24,240 | 24,240 |
| 9 | 1.1.7 | **Malzeme İhtiyaç Planlaması** | 7d | 2021-03-30 A | 2021-04-06 A | 7 | 100% | 2021-03-01 | 2021-03-01 | 1d |  | Endüstri Mühendisi | 56h | 56h | 22,840,665.48 | 22,840,665.48 |
| 10 | 1.1.7.1 | **Bina Yapımı Malzeme İhtiyaç Planlaması** | 1d | 2021-03-30 A | 2021-03-30 A | 7 | 100% |  |  |  |  |  |  |  | 21,628,169 | 21,628,169 |
| 11 | 1.1.7.1.1 | İnşaat kumu alınması | 1d | 2021-03-30 A | 2021-03-30 A |  | 100% |  |  |  |  | İnşaat kumu [2000 10 M2] |  |  | 2,400,000 | 2,400,000 |
| 12 | 1.1.7.1.2 | Ahşap alınması | 1d | 2021-03-30 A | 2021-03-30 A |  | 100% |  |  |  |  | Ahşap [55000 M2] |  |  | 1,100,000 | 1,100,000 |
| 13 | 1.1.7.1.3 | Alçı alınması | 1d | 2021-03-30 A | 2021-03-30 A |  | 100% |  |  |  |  | Alçı [40000 M2] |  |  | 1,400,000 | 1,400,000 |
| 14 | 1.1.7.1.4 | Alüminyum alınması | 1d | 2021-03-30 A | 2021-03-30 A |  | 100% |  |  |  |  | Alüminyum [10000 Kg] |  |  | 336,000 | 336,000 |
| 15 | 1.1.7.1.5 | Boru alınması | 1d | 2021-03-30 A | 2021-03-30 A |  | 100% |  |  |  |  | Kısa boru [1500 Adet]; Uzun boru [1000 Adet] |  |  | 50,000 | 50,000 |
| 16 | 1.1.7.1.6 | Çimento alınması | 1d | 2021-03-30 A | 2021-03-30 A |  | 100% |  |  |  |  | Çimento [2.5e+06 Kg] |  |  | 2,250,000 | 2,250,000 |
| 17 | 1.1.7.1.7 | Demir alınması | 1d | 2021-03-30 A | 2021-03-30 A |  | 100% |  |  |  |  | Demir [340 Ton] |  |  | 1,870,000 | 1,870,000 |
| 18 | 1.1.7.1.8 | Çelik alınması | 1d | 2021-03-30 A | 2021-03-30 A |  | 100% |  |  |  |  | Çelik [250 Ton] |  |  | 1,575,000 | 1,575,000 |
| 19 | 1.1.7.1.9 | Gaz beton alınması | 1d | 2021-03-30 A | 2021-03-30 A |  | 100% |  |  |  |  | Gaz beton [8300 M3] |  |  | 144,669 | 144,669 |
| 20 | 1.1.7.1.10 | Hazır beton alınması | 1d | 2021-03-30 A | 2021-03-30 A |  | 100% |  |  |  |  | Hazır beton [1200 M3] |  |  | 234,000 | 234,000 |
| 21 | 1.1.7.1.11 | Kireç alınması | 1d | 2021-03-30 A | 2021-03-30 A |  | 100% |  |  |  |  | Kireç [200000 25 Kg] |  |  | 2,700,000 | 2,700,000 |
| 22 | 1.1.7.1.12 | Seramik alınması | 1d | 2021-03-30 A | 2021-03-30 A |  | 100% |  |  |  |  | Seramik [7500 M2] |  |  | 356,250 | 356,250 |
| 23 | 1.1.7.1.13 | Tuğla alınması | 1d | 2021-03-30 A | 2021-03-30 A |  | 100% |  |  |  |  | Tuğla [500000 Adet] |  |  | 205,000 | 205,000 |
| 24 | 1.1.7.1.14 | Kiremit alınması | 1d | 2021-03-30 A | 2021-03-30 A |  | 100% |  |  |  |  | Kiremit [320000 Adet] |  |  | 912,000 | 912,000 |
| 25 | 1.1.7.1.15 | Drenaj borusu alınması | 1d | 2021-03-30 A | 2021-03-30 A |  | 100% |  |  |  |  | Drenaj borusu [1500 50 M] |  |  | 3,675,000 | 3,675,000 |
| 26 | 1.1.7.1.16 | Plywood alınması | 1d | 2021-03-30 A | 2021-03-30 A |  | 100% |  |  |  |  | Plywood [2500 Adet] |  |  | 562,500 | 562,500 |
| 27 | 1.1.7.1.17 | Mıcır alınması | 1d | 2021-03-30 A | 2021-03-30 A |  | 100% |  |  |  |  | Mıcır [1750 Ton] |  |  | 43,750 | 43,750 |
| 28 | 1.1.7.1.18 | Kabloların alınması | 1d | 2021-03-30 A | 2021-03-30 A |  | 100% |  |  |  |  | Kablolar [40000 M] |  |  | 200,000 | 200,000 |
| 29 | 1.1.7.1.19 | Curuf alınması | 1d | 2021-03-30 A | 2021-03-30 A |  | 100% |  |  |  |  | Curuf [1100 Ton] |  |  | 198,000 | 198,000 |
| 30 | 1.1.7.1.20 | Pencerelerin alınması | 1d | 2021-03-30 A | 2021-03-30 A |  | 100% |  |  |  |  | Pencere [136 Adet] |  |  | 47,600 | 47,600 |
| 31 | 1.1.7.1.21 | Kapıların alınması | 1d | 2021-03-30 A | 2021-03-30 A |  | 100% |  |  |  |  | Kapılar [78 Adet] |  |  | 42,900 | 42,900 |
| 32 | 1.1.7.1.22 | Isıtma Sistemleri | 1d | 2021-03-30 A | 2021-03-30 A |  | 100% |  |  |  |  | Isıtıcılar [25 Adet]; Petek [40000%]; Yerden Isıtma Boruları [150 M] |  |  | 1,307,500 | 1,307,500 |
| 33 | 1.1.7.1.23 | Aydınlatma ışıklarının alınması | 1d | 2021-03-30 A | 2021-03-30 A |  | 100% |  |  |  |  | Işık kaynağı [150 Adet] |  |  | 18,000 | 18,000 |

| ID | WBS | Task | Duration | Start | Finish | Predecessors | Complete | Resources | Cost | Actual cost |
| --- | --- | --- | --- | --- | --- | --- | --- | --- | --- | --- |
| 34 | 1.1.7.2 | **Havuz Yapımı Malzeme İhtiyaç Planlaması** | 1d | 2021-03-31 A | 2021-03-31 A | 10 | 100% |  | 236,357.48 | 236,357.48 |
| 35 | 1.1.7.2.1 | Kulvar halatları alınması | 1d | 2021-03-31 A | 2021-03-31 A |  | 100% | Kulvar Halatı [450 M] | 1,012.5 | 1,012.5 |
| 36 | 1.1.7.2.2 | Başlangıç platformları alınması | 1d | 2021-03-31 A | 2021-03-31 A |  | 100% | Başlangıç Platformu [10 Adet] | 6,000 | 6,000 |
| 37 | 1.1.7.2.3 | Geri dönüş işaretleri alınması | 1d | 2021-03-31 A | 2021-03-31 A |  | 100% | Geri dönüş işaretleri [10 Adet] | 200 | 200 |
| 38 | 1.1.7.2.4 | Havuz ışıklandırmalarının alınması | 1d | 2021-03-31 A | 2021-03-31 A |  | 100% | Işık kaynağı [100 Adet] | 12,000 | 12,000 |
| 39 | 1.1.7.2.5 | Havuz ızgaraları | 1d | 2021-03-31 A | 2021-03-31 A |  | 100% | Havuz Izgarası [150 M] | 8,190 | 8,190 |
| 40 | 1.1.7.2.6 | Mikrofon alınması | 1d | 2021-03-31 A | 2021-03-31 A |  | 100% | Mikrofon [1 Adet] | 20,537 | 20,537 |
| 41 | 1.1.7.2.7 | Transduser alınması | 1d | 2021-03-31 A | 2021-03-31 A |  | 100% | Transduser [1 Adet] | 500 | 500 |
| 42 | 1.1.7.2.8 | Güvenlik ekipmanları alınması | 1d | 2021-03-31 A | 2021-03-31 A |  | 100% | Güvenlik Ekipmanları [1 Adet] | 17,520 | 17,520 |
| 43 | 1.1.7.2.9 | Skorboard alınması | 1d | 2021-03-31 A | 2021-03-31 A |  | 100% | Scoreboard [4 Adet] | 18,000 | 18,000 |
| 44 | 1.1.7.2.10 | Ses sistemi alınması | 1d | 2021-03-31 A | 2021-03-31 A |  | 100% | Ses sistemi [1 Adet] | 88,451 | 88,451 |
| 45 | 1.1.7.2.11 | Havuz Temizlik Seti | 1d | 2021-03-31 A | 2021-03-31 A |  | 100% | Havuz Kimyasalları [10 Adet] | 5,855.8 | 5,855.8 |
| 46 | 1.1.7.2.12 | Temizlik kepçesi alınması | 1d | 2021-03-31 A | 2021-03-31 A |  | 100% | Temizlik Kepçesi [3 Adet] | 675 | 675 |
| 47 | 1.1.7.2.13 | Havuz merdiveni alınması | 1d | 2021-03-31 A | 2021-03-31 A |  | 100% | Havuz Merdiveni [3 Adet] | 7,993.68 | 7,993.68 |
| 48 | 1.1.7.2.14 | Farklı ölçülerde üretilen süpürge ve fırça sapları alınması | 1d | 2021-03-31 A | 2021-03-31 A |  | 100% | Süpürge-Fırça Sapları [3 Adet] | 1,500 | 1,500 |
| 49 | 1.1.7.2.15 | Teleskopik alınması | 1d | 2021-03-31 A | 2021-03-31 A |  | 100% | Teleskopik [3 Adet] | 109.5 | 109.5 |
| 50 | 1.1.7.2.16 | Döşeme fırçaları alınması | 1d | 2021-03-31 A | 2021-03-31 A |  | 100% | Döşeme Fırçaları [5 Adet] | 1,000 | 1,000 |
| 51 | 1.1.7.2.17 | Vakum hortumu ve adaptörü alınması | 1d | 2021-03-31 A | 2021-03-31 A |  | 100% | Vakum Adaptörü [1 Adet]; Vakum Hortumu [1 Adet] | 338 | 338 |
| 52 | 1.1.7.2.18 | Su pompası alınması | 1d | 2021-03-31 A | 2021-03-31 A |  | 100% | Su pompası [1 Adet] | 1,239 | 1,239 |
| 53 | 1.1.7.2.19 | Kimyasal test malzemeleri alınması | 1d | 2021-03-31 A | 2021-03-31 A |  | 100% | Kimyasal test malzemeleri [1 Adet] | 1,336 | 1,336 |
| 54 | 1.1.7.2.20 | Fayans Temizleyici alınması | 1d | 2021-03-31 A | 2021-03-31 A |  | 100% | Fayans [10 Adet] | 300 | 300 |
| 55 | 1.1.7.2.21 | Havuz mozaiklerinin alınması | 1d | 2021-03-31 A | 2021-03-31 A |  | 100% | Mozaik [1550 M2] | 31,000 | 31,000 |
| 56 | 1.1.7.2.22 | Havuz yalıtım malzemesi alınması | 1d | 2021-03-31 A | 2021-03-31 A |  | 100% | Havuz Yalıtım Malzemesi [1 Adet] | 3,000 | 3,000 |
| 57 | 1.1.7.2.23 | Dalış tahtası alınması | 1d | 2021-03-31 A | 2021-03-31 A |  | 100% | Dalış Tahtası [2 Adet] | 8,400 | 8,400 |
| 58 | 1.1.7.2.24 | Kış bakım ilacı alınması | 1d | 2021-03-31 A | 2021-03-31 A |  | 100% | Kış Bakım İlacı [50 Kg] | 1,200 | 1,200 |

| ID | WBS | Task | Duration | Start | Finish | Predecessors | Complete | Resources | Cost | Actual cost |
| --- | --- | --- | --- | --- | --- | --- | --- | --- | --- | --- |
| 59 | 1.1.7.3 | **Jakuzi Odası Malzeme İhtiyaç Planlaması** | 1d | 2021-04-01 A | 2021-04-01 A | 34 | 100% |  | 39,966 | 39,966 |
| 60 | 1.1.7.3.1 | Jakuzi alınması | 1d | 2021-04-01 A | 2021-04-01 A |  | 100% | Jakuzi [3 Adet] | 32,736 | 32,736 |
| 61 | 1.1.7.3.2 | Aydınlatma ışıklarının alınması | 1d | 2021-04-01 A | 2021-04-01 A |  | 100% | Işık kaynağı [4 Adet] | 480 | 480 |
| 62 | 1.1.7.3.3 | Duvar seramiklerinin alınması | 1d | 2021-04-01 A | 2021-04-01 A |  | 100% | Duvar Seramikleri [90 M2] | 6,750 | 6,750 |
| 63 | 1.1.7.4 | **Sauna Odası Malzeme İhtiyaç Planlaması** | 1d | 2021-04-01 A | 2021-04-01 A | 34 | 100% |  | 19,706 | 19,706 |
| 64 | 1.1.7.4.1 | Yansıtıcı folyoların alınımı | 1d | 2021-04-01 A | 2021-04-01 A |  | 100% | Yansıtıcı Folyo [1000 Adet] | 10,000 | 10,000 |
| 65 | 1.1.7.4.2 | Fayans alımı | 1d | 2021-04-01 A | 2021-04-01 A |  | 100% | Fayans [30 Adet] | 900 | 900 |
| 66 | 1.1.7.4.3 | Işıkların alınması | 1d | 2021-04-01 A | 2021-04-01 A |  | 100% | Işık kaynağı [1 Adet] | 120 | 120 |
| 67 | 1.1.7.4.4 | Cam Kapı | 1d | 2021-04-01 A | 2021-04-01 A |  | 100% | Cam kapı [1 Adet] | 3,594 | 3,594 |
| 68 | 1.1.7.4.5 | Sauna kovalarının alınması | 1d | 2021-04-01 A | 2021-04-01 A |  | 100% | Sauna Kovaları [4 Adet] | 1,196 | 1,196 |
| 69 | 1.1.7.4.6 | Kepçelerin alınması | 1d | 2021-04-01 A | 2021-04-01 A |  | 100% | Kepçeler [6 Adet] | 504 | 504 |
| 70 | 1.1.7.4.7 | Saatlerin alınması | 1d | 2021-04-01 A | 2021-04-01 A |  | 100% | Saatler [1 Adet] | 75 | 75 |
| 71 | 1.1.7.4.8 | Higrometre alınması | 1d | 2021-04-01 A | 2021-04-01 A |  | 100% | Higrometre [2 Adet] | 1,172 | 1,172 |
| 72 | 1.1.7.4.9 | Termometre alınması | 1d | 2021-04-01 A | 2021-04-01 A |  | 100% | Termometre [2 Adet] | 360 | 360 |
| 73 | 1.1.7.4.10 | Havlu askısı alımı | 1d | 2021-04-01 A | 2021-04-01 A |  | 100% | Havlu Askısı [4 Adet] | 100 | 100 |
| 74 | 1.1.7.4.11 | Mentol sıvısı alınması | 1d | 2021-04-01 A | 2021-04-01 A |  | 100% | Mentol Sıvısı [10 Litre] | 1,685 | 1,685 |
| 75 | 1.1.7.5 | **Spor Salonu Malzeme İhtiyaç Planlaması** | 1d | 2021-04-01 A | 2021-04-01 A | 34 | 100% |  | 266,873 | 266,873 |
| 76 | 1.1.7.5.1 | Duvar ve tavan ışıklarının alınması | 1d | 2021-04-01 A | 2021-04-01 A |  | 100% | Işık kaynağı [15 Adet] | 1,800 | 1,800 |
| 77 | 1.1.7.5.2 | Farklı ölçülerde boy aynalarının alınması | 1d | 2021-04-01 A | 2021-04-01 A |  | 100% | Ayna [8 Adet] | 920 | 920 |
| 78 | 1.1.7.5.3 | Koşu bantlarının alınması | 1d | 2021-04-01 A | 2021-04-01 A |  | 100% | Koşu bandı [12 Adet] | 40,620 | 40,620 |
| 79 | 1.1.7.5.4 | Kondisyon bisikletlerinin alınması | 1d | 2021-04-01 A | 2021-04-01 A |  | 100% | Kondinasyon Bisikleti [12 Adet] | 20,232 | 20,232 |
| 80 | 1.1.7.5.5 | Serbest ağırlık makinelerinin alınması | 1d | 2021-04-01 A | 2021-04-01 A |  | 100% | Serbest ağırlık makineleri [7 Adet] | 35,000 | 35,000 |
| 81 | 1.1.7.5.6 | Ağırlık istasyonlarının alınması | 1d | 2021-04-01 A | 2021-04-01 A |  | 100% | Ağırlık istasyonları [1 Adet] | 42,500 | 42,500 |
| 82 | 1.1.7.5.7 | Ağırlık sehpalarının alınması | 1d | 2021-04-01 A | 2021-04-01 A |  | 100% | Ağırlık sehpaları [10 Adet] | 4,500 | 4,500 |
| 83 | 1.1.7.5.8 | Serbest ağırlıklarının | 1d | 2021-04-01 A | 2021-04-01 A |  | 100% | Serbest ağırlık [10 Adet] | 12,000 | 12,000 |
| 84 | 1.1.7.5.9 | Pilates ürünlerinin alınması | 1d | 2021-04-01 A | 2021-04-01 A |  | 100% | Pilates ürünleri [20 Adet] | 5,000 | 5,000 |
| 85 | 1.1.7.5.10 | Vücut geliştirme aletlerinin alınması | 1d | 2021-04-01 A | 2021-04-01 A |  | 100% | Vücut geliştirme aletleri [5 Adet] | 15,850 | 15,850 |
| 86 | 1.1.7.5.11 | Ses sisteminin alınması | 1d | 2021-04-01 A | 2021-04-01 A |  | 100% | Ses sistemi [1 Adet] | 88,451 | 88,451 |

| ID | WBS | Task | Duration | Start | Finish | Predecessors | Complete | Resources | Cost | Actual cost |
| --- | --- | --- | --- | --- | --- | --- | --- | --- | --- | --- |
| 87 | 1.1.7.6 | **Buhar Odası Malzeme İhtiyaç Planlaması** | 1d | 2021-04-02 A | 2021-04-02 A | 75 | 100% |  | 74,164 | 74,164 |
| 88 | 1.1.7.6.1 | Buhar odası jeneratörü alınması | 1d | 2021-04-02 A | 2021-04-02 A |  | 100% | Buhar Odası Jeneratörü [1 Adet] | 70,000 | 70,000 |
| 89 | 1.1.7.6.2 | Buhar odası aydınlatması alınması | 1d | 2021-04-02 A | 2021-04-02 A |  | 100% | Işık kaynağı [1 Adet] | 120 | 120 |
| 90 | 1.1.7.6.3 | Buhar çıkış ağzı alınması | 1d | 2021-04-02 A | 2021-04-02 A |  | 100% | Buhar Çıkış Ağzı [1 Adet] | 450 | 450 |
| 91 | 1.1.7.6.4 | Cam buhar odası kapısı alınması | 1d | 2021-04-02 A | 2021-04-02 A |  | 100% | Cam kapı [1 Adet] | 3,594 | 3,594 |
| 92 | 1.1.7.7 | **Masaj Odası Malzeme İhtiyaç Planlaması** | 1d | 2021-04-02 A | 2021-04-02 A | 75 | 100% |  | 43,088 | 43,088 |
| 93 | 1.1.7.7.1 | Masaj masasının alınması | 1d | 2021-04-02 A | 2021-04-02 A |  | 100% | Masaj Masası [8 Adet] | 5,600 | 5,600 |
| 94 | 1.1.7.7.2 | Elektrikli ısıtmalı cilt bakım etejeri alınması | 1d | 2021-04-02 A | 2021-04-02 A |  | 100% | Cilt Bakım Etejeri [2 Adet] | 900 | 900 |
| 95 | 1.1.7.7.3 | Cilt bakım taburesinin alınması | 1d | 2021-04-02 A | 2021-04-02 A |  | 100% | Cilt Bakım Taburesi [2 Adet] | 900 | 900 |
| 96 | 1.1.7.7.4 | Masaj yağı alınması | 1d | 2021-04-02 A | 2021-04-02 A |  | 100% | Masaj Yağı [10 Litre] | 3,250 | 3,250 |
| 97 | 1.1.7.7.5 | Spa dinlenme yatağının alınması | 1d | 2021-04-02 A | 2021-04-02 A |  | 100% | Spa Dinlenme Yatağı [8 Adet] | 28,000 | 28,000 |
| 98 | 1.1.7.7.6 | Ortopedik masaj yastığı alınması | 1d | 2021-04-02 A | 2021-04-02 A |  | 100% | Ortopedik Masaj Yastığı [16 Adet] | 3,088 | 3,088 |
| 99 | 1.1.7.7.7 | Pille çalışan mumların alınması | 1d | 2021-04-02 A | 2021-04-02 A |  | 100% | Mum [20 Adet] | 100 | 100 |
| 100 | 1.1.7.7.8 | Havluların alınması | 1d | 2021-04-02 A | 2021-04-02 A |  | 100% | Havlu [50 Adet] | 1,250 | 1,250 |
| 101 | 1.1.7.8 | **Soyunma Odaları Malzeme İhtiyaç Planlaması** | 1d | 2021-04-02 A | 2021-04-02 A | 75 | 100% |  | 73,100 | 73,100 |
| 102 | 1.1.7.8.1 | Dolapların alınması | 1d | 2021-04-02 A | 2021-04-02 A |  | 100% | Dolap [30 Adet] | 36,900 | 36,900 |
| 103 | 1.1.7.8.2 | Soyunma odası bankının alınması | 1d | 2021-04-02 A | 2021-04-02 A |  | 100% | Bank [10 Adet] | 2,300 | 2,300 |
| 104 | 1.1.7.8.3 | Duş kabinlerinin alınması | 1d | 2021-04-02 A | 2021-04-02 A |  | 100% | Duş kabini [20 Adet] | 6,000 | 6,000 |
| 105 | 1.1.7.8.4 | Çöp kutularının alınması | 1d | 2021-04-02 A | 2021-04-02 A |  | 100% | Çöp kutusu [10 Adet] | 500 | 500 |
| 106 | 1.1.7.8.5 | Askıların alınması | 1d | 2021-04-02 A | 2021-04-02 A |  | 100% | Askı [100 Adet] | 350 | 350 |
| 107 | 1.1.7.8.6 | Aynaların alınması | 1d | 2021-04-02 A | 2021-04-02 A |  | 100% | Ayna [20 Adet] | 2,300 | 2,300 |
| 108 | 1.1.7.8.7 | Tuvalet malzemelerin alınması | 1d | 2021-04-02 A | 2021-04-02 A |  | 100% | Tuvalet malzemeleri [5 Adet] | 3,750 | 3,750 |
| 109 | 1.1.7.8.8 | Klozetlerin ve klozet kabinlerinin alınması | 1d | 2021-04-02 A | 2021-04-02 A |  | 100% | Klozet [25 Adet]; Klozet kabini [25 Adet] | 21,000 | 21,000 |
| 110 | 1.1.7.9 | **Tribün Malzeme İhtiyaç Planması** | 1d | 2021-04-03 A | 2021-04-03 A | 101 | 100% |  | 222,250 | 222,250 |
| 111 | 1.1.7.9.1 | Tribün koltuklarının alınması | 1d | 2021-04-03 A | 2021-04-03 A |  | 100% | Tribün koltukları [1500 Adet] | 54,000 | 54,000 |
| 112 | 1.1.7.9.2 | Tribün için çöp kutusu alınması | 1d | 2021-04-03 A | 2021-04-03 A |  | 100% | Çöp kutusu [50 Adet] | 2,500 | 2,500 |
| 113 | 1.1.7.9.3 | Engelli tribünü için özel koltuk alınması | 1d | 2021-04-03 A | 2021-04-03 A |  | 100% | Koltuk [75 Adet] | 93,750 | 93,750 |
| 114 | 1.1.7.9.4 | Loca için televizyon alınması | 1d | 2021-04-03 A | 2021-04-03 A |  | 100% | Televizyon [3 Adet] | 8,100 | 8,100 |
| 115 | 1.1.7.9.5 | Loca için minibar alınması | 1d | 2021-04-03 A | 2021-04-03 A |  | 100% | Minibar [4 Adet] | 3,000 | 3,000 |
| 116 | 1.1.7.9.6 | Loca mobilyaları alınması | 1d | 2021-04-03 A | 2021-04-03 A |  | 100% | Mobilya [2 Adet] | 24,600 | 24,600 |
| 117 | 1.1.7.9.7 | Loca için kahve makinası alınması | 1d | 2021-04-03 A | 2021-04-03 A |  | 100% | Kahve makinası [1 Adet] | 5,000 | 5,000 |
| 118 | 1.1.7.9.8 | Portmanto ve kilitli dolap alınması | 1d | 2021-04-03 A | 2021-04-03 A |  | 100% | Portmanto [2 Adet]; Kilitli dolap [20 Adet] | 31,300 | 31,300 |

| ID | WBS | Task | Duration | Start | Finish | Predecessors | Complete | Resources | Cost | Actual cost |
| --- | --- | --- | --- | --- | --- | --- | --- | --- | --- | --- |
| 119 | 1.1.7.10 | **Revir Odası Malzeme İhtiyaç Planlaması** | 1d | 2021-04-03 A | 2021-04-03 A | 101 | 100% |  | 19,492 | 19,492 |
| 120 | 1.1.7.10.1 | Çift kapalı ve camlı ilaç dolabı alınması | 1d | 2021-04-03 A | 2021-04-03 A |  | 100% | Çift Kapılı dolap [2 Adet]; Camlı ilaç dolabı [2 Adet] | 1,878 | 1,878 |
| 121 | 1.1.7.10.2 | Otoskop ve oftalmoskop alınması | 1d | 2021-04-03 A | 2021-04-03 A |  | 100% | Otoskop [3 Adet]; Oftalmoskop [3 Adet] | 945 | 945 |
| 122 | 1.1.7.10.3 | Mobil aspiratör cihazı alınması | 1d | 2021-04-03 A | 2021-04-03 A |  | 100% | Mobil Aspiratör [3 Adet] | 1,290 | 1,290 |
| 123 | 1.1.7.10.4 | Sağlık malzemelerinin alınması | 1d | 2021-04-03 A | 2021-04-03 A |  | 100% | Sağlık Malzemeleri [10 Adet] | 6,250 | 6,250 |
| 124 | 1.1.7.10.5 | Muayene masası alınması | 1d | 2021-04-03 A | 2021-04-03 A |  | 100% | Muayene Masası [5 Adet] | 2,485 | 2,485 |
| 125 | 1.1.7.10.6 | Portatif katlanır sedye alınması | 1d | 2021-04-03 A | 2021-04-03 A |  | 100% | Portatif Katlanır Sedye [2 Adet] | 1,130 | 1,130 |
| 126 | 1.1.7.10.7 | Paravan alınması | 1d | 2021-04-03 A | 2021-04-03 A |  | 100% | Paravan [2 Adet] | 520 | 520 |
| 127 | 1.1.7.10.8 | Boy ölçer özellikli dijital baskül alınması | 1d | 2021-04-03 A | 2021-04-03 A |  | 100% | Dijital Baskül [1 Adet] | 45 | 45 |
| 128 | 1.1.7.10.9 | Tekerlekli sandelye alınması | 1d | 2021-04-03 A | 2021-04-03 A |  | 100% | Tekerlekli sandalye [7 Adet] | 3,514 | 3,514 |
| 129 | 1.1.7.10.10 | Doktor masasının alınması | 1d | 2021-04-03 A | 2021-04-03 A |  | 100% | Doktor masası [2 Adet] | 500 | 500 |
| 130 | 1.1.7.10.11 | Doktor koltuğunun alınması | 1d | 2021-04-03 A | 2021-04-03 A |  | 100% | Doktor koltuğu [2 Adet] | 400 | 400 |
| 131 | 1.1.7.10.12 | Tıbbi atık kovasının alınması | 1d | 2021-04-03 A | 2021-04-03 A |  | 100% | Tıbbi atık kovası [1 Adet] | 175 | 175 |
| 132 | 1.1.7.10.13 | Lavabo yapılması | 1d | 2021-04-03 A | 2021-04-03 A |  | 100% | Lavabo [1 Adet] | 360 | 360 |
| 133 | 1.1.7.11 | **Hakem Odası Malzeme İhtiyaç Planlaması** | 1d | 2021-04-05 A | 2021-04-05 A | 119 | 100% |  | 10,880 | 10,880 |
| 134 | 1.1.7.11.1 | Masaların alınması | 1d | 2021-04-05 A | 2021-04-05 A |  | 100% | Masa [2 Adet] | 500 | 500 |
| 135 | 1.1.7.11.2 | Dolapların alınması | 1d | 2021-04-05 A | 2021-04-05 A |  | 100% | Dolap [1 Adet] | 1,230 | 1,230 |
| 136 | 1.1.7.11.3 | Koltukların alınması | 1d | 2021-04-05 A | 2021-04-05 A |  | 100% | Koltuk [2 Adet] | 2,500 | 2,500 |
| 137 | 1.1.7.11.4 | Duş kabinlerinin alınması | 1d | 2021-04-05 A | 2021-04-05 A |  | 100% | Duş kabini [4 Adet] | 1,200 | 1,200 |
| 138 | 1.1.7.11.5 | Çöp kovasının alınması | 1d | 2021-04-05 A | 2021-04-05 A |  | 100% | Çöp kutusu [2 Adet] | 100 | 100 |
| 139 | 1.1.7.11.6 | Su sebilinin alınması | 1d | 2021-04-05 A | 2021-04-05 A |  | 100% | Su sebili [1 Adet] | 1,460 | 1,460 |
| 140 | 1.1.7.11.7 | Klozetlerin ve klozet kabinlerinin alınması | 1d | 2021-04-05 A | 2021-04-05 A |  | 100% | Klozet [4 Adet]; Klozet kabini [4 Adet] | 3,360 | 3,360 |
| 141 | 1.1.7.11.8 | Aynaların alınması | 1d | 2021-04-05 A | 2021-04-05 A |  | 100% | Ayna [4 Adet] | 460 | 460 |
| 142 | 1.1.7.11.9 | Askıların alınması | 1d | 2021-04-05 A | 2021-04-05 A |  | 100% | Askı [20 Adet] | 70 | 70 |

| ID | WBS | Task | Duration | Start | Finish | Predecessors | Complete | Resources | Cost | Actual cost |
| --- | --- | --- | --- | --- | --- | --- | --- | --- | --- | --- |
| 143 | 1.1.7.12 | **Çalışan Odaları Malzeme İhtiyaç Planlaması** | 1d | 2021-04-05 A | 2021-04-05 A | 119 | 100% |  | 61,220 | 61,220 |
| 144 | 1.1.7.12.1 | Masaların alınması | 1d | 2021-04-05 A | 2021-04-05 A |  | 100% | Masa [10 Adet] | 2,500 | 2,500 |
| 145 | 1.1.7.12.2 | Dolapların alınması | 1d | 2021-04-05 A | 2021-04-05 A |  | 100% | Dolap [4 Adet] | 4,920 | 4,920 |
| 146 | 1.1.7.12.3 | Sandalyelerin alınması | 1d | 2021-04-05 A | 2021-04-05 A |  | 100% | Sandalye [10 Adet] | 950 | 950 |
| 147 | 1.1.7.12.4 | Bilgisayarların alınması | 1d | 2021-04-05 A | 2021-04-05 A |  | 100% | Bilgisayar [7 Adet] | 52,500 | 52,500 |
| 148 | 1.1.7.12.5 | Askılık alınması | 1d | 2021-04-05 A | 2021-04-05 A |  | 100% | Askı [100 Adet] | 350 | 350 |
| 149 | 1.1.7.13 | **Malzeme Odası Malzeme İhtiyaç Planlaması** | 1d | 2021-04-05 A | 2021-04-05 A | 119 | 100% |  | 22,170 | 22,170 |
| 150 | 1.1.7.13.1 | Rafların alınması | 1d | 2021-04-05 A | 2021-04-05 A |  | 100% | Raf [47 Adet] | 1,410 | 1,410 |
| 151 | 1.1.7.13.2 | Depolama dolaplarının alınması | 1d | 2021-04-05 A | 2021-04-05 A |  | 100% | Dolap [12 Adet] | 14,760 | 14,760 |
| 152 | 1.1.7.13.3 | Temizlik malzemelerinin alınması | 1d | 2021-04-05 A | 2021-04-05 A |  | 100% | Temizlik malzemeleri [5 Adet] | 6,000 | 6,000 |
| 153 | 1.1.7.14 | **Tuvaletler İçin Malzeme İhtiyaç Planlaması** | 1d | 2021-04-05 A | 2021-04-05 A | 119 | 100% |  | 77,790 | 77,790 |
| 154 | 1.1.7.14.1 | Pisuarların alınması | 1d | 2021-04-05 A | 2021-04-05 A |  | 100% | Pisuar [40 Adet] | 13,440 | 13,440 |
| 155 | 1.1.7.14.2 | Klozetlerin ve klozet kabinlerinin alınması | 1d | 2021-04-05 A | 2021-04-05 A |  | 100% | Klozet [40 Adet]; Klozet kabini [40 Adet] | 33,600 | 33,600 |
| 156 | 1.1.7.14.3 | Çeşmelerin alınması | 1d | 2021-04-05 A | 2021-04-05 A |  | 100% | Sensörlü Çeşme [30 Adet] | 13,800 | 13,800 |
| 157 | 1.1.7.14.4 | Aynaların alınması | 1d | 2021-04-05 A | 2021-04-05 A |  | 100% | Ayna [30 Adet] | 3,450 | 3,450 |
| 158 | 1.1.7.14.5 | Lavabo alınması | 1d | 2021-04-05 A | 2021-04-05 A |  | 100% | Lavabo [30 Adet] | 10,800 | 10,800 |
| 159 | 1.1.7.14.6 | Engelliler için destek ünitelerinin alınması | 1d | 2021-04-05 A | 2021-04-05 A |  | 100% | Engelliler için destek üniteleri [6 Adet] | 2,700 | 2,700 |
| 160 | 1.1.7.15 | **Kantin Malzeme İhtiyaç Planlaması** | 1d | 2021-04-06 A | 2021-04-06 A | 153 | 100% |  | 15,950 | 15,950 |
| 161 | 1.1.7.15.1 | Mutfak tezgahının alınması | 1d | 2021-04-06 A | 2021-04-06 A |  | 100% | Mutfak tezgahı [1 Adet] | 2,320 | 2,320 |
| 162 | 1.1.7.15.2 | Mutfak malzemelerinin alınması | 1d | 2021-04-06 A | 2021-04-06 A |  | 100% | Mutfak malzemeleri [3 Adet] | 12,450 | 12,450 |
| 163 | 1.1.7.15.3 | Sandalyelerin alınması | 1d | 2021-04-06 A | 2021-04-06 A |  | 100% | Sandalye [2 Adet] | 190 | 190 |
| 164 | 1.1.7.15.4 | Masanın alınması | 1d | 2021-04-06 A | 2021-04-06 A |  | 100% | Masa [3 Adet] | 750 | 750 |
| 165 | 1.1.7.15.5 | Rafların alınması | 1d | 2021-04-06 A | 2021-04-06 A |  | 100% | Raf [8 Adet] | 240 | 240 |
| 166 | 1.1.7.16 | **Ofislerin Malzeme İhtiyaç Planlaması** | 1d | 2021-04-06 A | 2021-04-06 A | 153 | 100% |  | 23,330 | 23,330 |
| 167 | 1.1.7.16.1 | Dolapların alınması | 1d | 2021-04-06 A | 2021-04-06 A |  | 100% | Dolap [6 Adet] | 7,380 | 7,380 |
| 168 | 1.1.7.16.2 | Sandalyelerin alınması | 1d | 2021-04-06 A | 2021-04-06 A |  | 100% | Sandalye [10 Adet] | 950 | 950 |
| 169 | 1.1.7.16.3 | Masaların alınması | 1d | 2021-04-06 A | 2021-04-06 A |  | 100% | Masa [10 Adet] | 2,500 | 2,500 |
| 170 | 1.1.7.16.4 | Ofis araç gereçlerinin alınması | 1d | 2021-04-06 A | 2021-04-06 A |  | 100% | Ofis araç gereçleri [5 Adet] | 12,500 | 12,500 |

| ID | WBS | Task | Duration | Start | Finish | Predecessors | Complete | Baseline start | Baseline finish | Baseline duration | Resources | Work | Actual work | Cost | Actual cost |
| --- | --- | --- | --- | --- | --- | --- | --- | --- | --- | --- | --- | --- | --- | --- | --- |
| 171 | 1.1.8 | **Bütçe planlama** | 18d | 2021-03-30 A | 2021-04-19 A | 7 | 100% | 2021-01-14 | 2021-01-18 | 3d | Endüstri Mühendisi; Muhasebeci; Yönetim; Yönetici | 744h | 744h | 75,600 | 75,600 |
| 172 | 1.1.8.1 | Maliyet Analizi Yapılması | 6d | 2021-03-30 A | 2021-04-05 A |  | 100% |  |  |  | Muhasebeci; Endüstri Mühendisi | 96h | 96h | 7,440 | 7,440 |
| 173 | 1.1.8.2 | Giderlerin Belirlenmesi | 6d | 2021-04-06 A | 2021-04-12 A | 172 | 100% |  |  |  | Muhasebeci | 48h | 48h | 2,160 | 2,160 |
| 174 | 1.1.8.3 | Gelirlerin Tahminen Belirlenmesi | 6d | 2021-04-13 A | 2021-04-19 A | 173 | 100% |  |  |  | Muhasebeci | 48h | 48h | 2,160 | 2,160 |
| 175 | 1.2 | **Tasarım** | 44d | 2021-02-04 A | 2021-03-26 A | 226 | 100% | 2021-01-19 | 2021-02-25 | 28d |  | 1408h | 1408h | 99,360 | 98,560 |
| 176 | 1.2.1 | Bina tasarımı | 14d | 2021-02-04 A | 2021-02-19 A |  | 100% | 2021-01-19 | 2021-01-27 | 7d | İnşaat Mühendisi; Mimar; Elektrik Elektronik Mühendisi; İç Mimar; Kağıt [0.1%] | 448h | 448h | 31,410 | 31,360 |
| 177 | 1.2.2 | Havuz tasarımı | 3d | 2021-02-20 A | 2021-02-23 A | 176 | 100% | 2021-01-28 | 2021-01-29 | 2d | İnşaat Mühendisi; Mimar; Elektrik Elektronik Mühendisi; İç Mimar; Kağıt [0.1%] | 96h | 96h | 6,770 | 6,720 |
| 178 | 1.2.3 | Spor salonu tasarımı | 3d | 2021-02-24 A | 2021-02-26 A | 177 | 100% | 2021-02-01 | 2021-02-02 | 2d | İnşaat Mühendisi; Mimar; Elektrik Elektronik Mühendisi; İç Mimar; Kağıt [0.1%] | 96h | 96h | 6,770 | 6,720 |
| 179 | 1.2.4 | Jakuzi odası tasarımı | 1d | 2021-02-27 A | 2021-02-27 A | 178 | 100% | 2021-02-03 | 2021-02-03 | 1d | İnşaat Mühendisi; Mimar; Elektrik Elektronik Mühendisi; İç Mimar; Kağıt [0.1%] | 32h | 32h | 2,290 | 2,240 |
| 180 | 1.2.5 | Sauna odası tasarımı | 2d | 2021-03-01 A | 2021-03-02 A | 179 | 100% | 2021-02-04 | 2021-02-04 | 1d | İnşaat Mühendisi; Mimar; Elektrik Elektronik Mühendisi; İç Mimar; Kağıt [0.1%] | 64h | 64h | 4,530 | 4,480 |
| 181 | 1.2.6 | Buhar odası tasarımı | 2d | 2021-03-03 A | 2021-03-04 A | 180 | 100% | 2021-02-05 | 2021-02-05 | 1d | İnşaat Mühendisi; Mimar; Elektrik Elektronik Mühendisi; İç Mimar; Kağıt [0.1%] | 64h | 64h | 4,530 | 4,480 |
| 182 | 1.2.7 | Masaj odası tasarımı | 2d | 2021-03-05 A | 2021-03-06 A | 181 | 100% | 2021-02-08 | 2021-02-08 | 1d | İnşaat Mühendisi; Mimar; Elektrik Elektronik Mühendisi; İç Mimar; Kağıt [0.1%] | 64h | 64h | 4,530 | 4,480 |
| 183 | 1.2.8 | Soyunma odaları tasarımı | 1d | 2021-03-08 A | 2021-03-08 A | 182 | 100% | 2021-02-09 | 2021-02-09 | 1d | İnşaat Mühendisi; Mimar; Elektrik Elektronik Mühendisi; İç Mimar; Kağıt [0.1%] | 32h | 32h | 2,290 | 2,240 |
| 184 | 1.2.9 | Seyirci tribünleri tasarımı | 3d | 2021-03-09 A | 2021-03-11 A | 183 | 100% | 2021-02-10 | 2021-02-12 | 3d | İnşaat Mühendisi; Mimar; Elektrik Elektronik Mühendisi; İç Mimar; Kağıt [0.1%] | 96h | 96h | 6,770 | 6,720 |
| 185 | 1.2.10 | Revir odası tasarımı | 3d | 2021-03-12 A | 2021-03-15 A | 184 | 100% | 2021-02-15 | 2021-02-15 | 1d | İnşaat Mühendisi; Mimar; Elektrik Elektronik Mühendisi; İç Mimar; Kağıt [0.1%] | 96h | 96h | 6,770 | 6,720 |
| 186 | 1.2.11 | Hakem odası tasarımı | 1d | 2021-03-16 A | 2021-03-16 A | 185 | 100% | 2021-02-16 | 2021-02-16 | 1d | İnşaat Mühendisi; Mimar; Elektrik Elektronik Mühendisi; İç Mimar; Kağıt [0.1%] | 32h | 32h | 2,290 | 2,240 |
| 187 | 1.2.12 | Çalışan odaları tasarımı | 2d | 2021-03-17 A | 2021-03-18 A | 186 | 100% | 2021-02-17 | 2021-02-18 | 2d | İnşaat Mühendisi; Mimar; Elektrik Elektronik Mühendisi; İç Mimar; Kağıt [0.1%] | 64h | 64h | 4,530 | 4,480 |
| 188 | 1.2.13 | Malzeme odası tasarımı | 1d | 2021-03-19 A | 2021-03-19 A | 187 | 100% | 2021-02-19 | 2021-02-19 | 1d | İnşaat Mühendisi; Mimar; Elektrik Elektronik Mühendisi; İç Mimar; Kağıt [0.1%] | 32h | 32h | 2,290 | 2,240 |
| 189 | 1.2.14 | Tuvaletlerin tasarımı | 2d | 2021-03-20 A | 2021-03-22 A | 188 | 100% | 2021-02-22 | 2021-02-22 | 1d | İnşaat Mühendisi; Mimar; Elektrik Elektronik Mühendisi; İç Mimar; Kağıt [0.1%] | 64h | 64h | 4,530 | 4,480 |
| 190 | 1.2.15 | Kantin tasarımı | 1d | 2021-03-23 A | 2021-03-23 A | 189 | 100% | 2021-02-23 | 2021-02-23 | 1d | İnşaat Mühendisi; Mimar; Elektrik Elektronik Mühendisi; İç Mimar; Kağıt [0.1%] | 32h | 32h | 2,290 | 2,240 |
| 191 | 1.2.16 | Ofis odalarının tasarımı | 3d | 2021-03-24 A | 2021-03-26 A | 190 | 100% | 2021-02-24 | 2021-02-25 | 2d | İnşaat Mühendisi; Mimar; Elektrik Elektronik Mühendisi; İç Mimar; Kağıt [0.1%] | 96h | 96h | 6,770 | 6,720 |
| 192 | 1.3 | **İş Kollarını Bölümlemek** | 357d | 2021-01-14 A | 2022-03-24 A |  | 100% |  |  |  |  | 3576h | 3576h | 280,080 | 280,080 |
| 193 | 1.3.1 | **Çalışanların belirlenmesi** | 357d | 2021-01-14 A | 2022-03-24 A |  | 100% |  |  |  |  | 3488h | 3488h | 270,400 | 270,400 |
| 194 | 1.3.1.1 | **Bina inşaatı için işçi alımı** | 18d | 2021-03-30 A | 2021-04-19 A | 7 | 100% |  |  |  |  | 176h | 176h | 8,800 | 8,800 |
| 195 | 1.3.1.1.1 | İlan verilmesi | 1d | 2021-03-30 A | 2021-03-30 A |  | 100% |  |  |  | İnsan Kaynakları Yöneticisi | 8h | 8h | 400 | 400 |
| 196 | 1.3.1.1.2 | Başvuru Süreci | 12d | 2021-03-31 A | 2021-04-13 A | 195 | 100% |  |  |  | İnsan Kaynakları Yöneticisi | 96h | 96h | 4,800 | 4,800 |
| 197 | 1.3.1.1.3 | Başvuru değerlendirme | 3d | 2021-04-14 A | 2021-04-16 A | 196 | 100% |  |  |  | İnsan Kaynakları Yöneticisi | 24h | 24h | 1,200 | 1,200 |
| 198 | 1.3.1.1.4 | Maaş belirlenmesi | 1d | 2021-04-17 A | 2021-04-17 A | 197 | 100% |  |  |  | İnsan Kaynakları Yöneticisi | 8h | 8h | 400 | 400 |
| 199 | 1.3.1.1.5 | Havuz yapımı için işçi alımı | 1d | 2021-04-19 A | 2021-04-19 A | 198 | 100% |  |  |  | İnsan Kaynakları Yöneticisi | 8h | 8h | 400 | 400 |
| 200 | 1.3.1.1.6 | Tesisatçı işe alınması | 1d | 2021-04-19 A | 2021-04-19 A | 198 | 100% |  |  |  | İnsan Kaynakları Yöneticisi | 8h | 8h | 400 | 400 |
| 201 | 1.3.1.1.7 | İş güvenlik uzmanı alınması | 1d | 2021-04-19 A | 2021-04-19 A | 198 | 100% |  |  |  | İnsan Kaynakları Yöneticisi | 8h | 8h | 400 | 400 |
| 202 | 1.3.1.1.8 | Montaj işçilerinin alınması | 1d | 2021-04-19 A | 2021-04-19 A | 198 | 100% |  |  |  | İnsan Kaynakları Yöneticisi | 8h | 8h | 400 | 400 |
| 203 | 1.3.1.1.9 | İnşaat işçilerinin işe alınması | 1d | 2021-04-19 A | 2021-04-19 A | 198 | 100% |  |  |  | İnsan Kaynakları Yöneticisi | 8h | 8h | 400 | 400 |

| ID | WBS | Task | Duration | Start | Finish | Predecessors | Complete | Resources | Work | Actual work | Cost | Actual cost |
| --- | --- | --- | --- | --- | --- | --- | --- | --- | --- | --- | --- | --- |
| 204 | 1.3.1.2 | **MÜHENDİS İŞE ALIMI** | 18d | 2021-01-14 A | 2021-02-03 A | 4 | 100% |  | 456h | 456h | 22,800 | 22,800 |
| 205 | 1.3.1.2.1 | **ÇEVRE MÜHENDİSİ İŞE ALIMI** | 18d | 2021-01-14 A | 2021-02-03 A |  | 100% |  | 152h | 152h | 7,600 | 7,600 |
| 206 | 1.3.1.2.1.1 | İlan Verilmesi | 1d | 2021-01-14 A | 2021-01-14 A |  | 100% | İnsan Kaynakları Yöneticisi | 8h | 8h | 400 | 400 |
| 207 | 1.3.1.2.1.2 | Başvuru Süreci | 12d | 2021-01-14 A | 2021-01-27 A |  | 100% | İnsan Kaynakları Yöneticisi | 96h | 96h | 4,800 | 4,800 |
| 208 | 1.3.1.2.1.3 | Başvuru Değerlendirme | 3d | 2021-01-28 A | 2021-01-30 A | 207 | 100% | İnsan Kaynakları Yöneticisi | 24h | 24h | 1,200 | 1,200 |
| 209 | 1.3.1.2.1.4 | Mülakat Yapılması | 1d | 2021-02-01 A | 2021-02-01 A | 208 | 100% | İnsan Kaynakları Yöneticisi | 8h | 8h | 400 | 400 |
| 210 | 1.3.1.2.1.5 | Maaş Belirlenmesi | 1d | 2021-02-02 A | 2021-02-02 A | 209 | 100% | İnsan Kaynakları Yöneticisi | 8h | 8h | 400 | 400 |
| 211 | 1.3.1.2.1.6 | İşe Alım | 1d | 2021-02-03 A | 2021-02-03 A | 210 | 100% | İnsan Kaynakları Yöneticisi | 8h | 8h | 400 | 400 |
| 212 | 1.3.1.2.2 | **İNŞAAT MÜHENDİSİ İŞE ALIMI** | 18d | 2021-01-14 A | 2021-02-03 A |  | 100% |  | 152h | 152h | 7,600 | 7,600 |
| 213 | 1.3.1.2.2.1 | İlan Verilmesi | 1d | 2021-01-14 A | 2021-01-14 A |  | 100% | İnsan Kaynakları Yöneticisi | 8h | 8h | 400 | 400 |
| 214 | 1.3.1.2.2.2 | Başvuru Süreci | 12d | 2021-01-14 A | 2021-01-27 A |  | 100% | İnsan Kaynakları Yöneticisi | 96h | 96h | 4,800 | 4,800 |
| 215 | 1.3.1.2.2.3 | Başvuru Değerlendirme | 3d | 2021-01-28 A | 2021-01-30 A | 214 | 100% | İnsan Kaynakları Yöneticisi | 24h | 24h | 1,200 | 1,200 |
| 216 | 1.3.1.2.2.4 | Mülakat Yapılması | 1d | 2021-02-01 A | 2021-02-01 A | 215 | 100% | İnsan Kaynakları Yöneticisi | 8h | 8h | 400 | 400 |
| 217 | 1.3.1.2.2.5 | Maaş Belirlenmesi | 1d | 2021-02-02 A | 2021-02-02 A | 216 | 100% | İnsan Kaynakları Yöneticisi | 8h | 8h | 400 | 400 |
| 218 | 1.3.1.2.2.6 | İşe Alım | 1d | 2021-02-03 A | 2021-02-03 A | 217 | 100% | İnsan Kaynakları Yöneticisi | 8h | 8h | 400 | 400 |
| 219 | 1.3.1.2.3 | **ELEKTRİK ELEKTRONİK MÜHENDİSİ İŞE ALIMI** | 18d | 2021-01-14 A | 2021-02-03 A |  | 100% |  | 152h | 152h | 7,600 | 7,600 |
| 220 | 1.3.1.2.3.1 | İlan Verilmesi | 1d | 2021-01-14 A | 2021-01-14 A |  | 100% | İnsan Kaynakları Yöneticisi | 8h | 8h | 400 | 400 |
| 221 | 1.3.1.2.3.2 | Başvuru Süreci | 12d | 2021-01-14 A | 2021-01-27 A |  | 100% | İnsan Kaynakları Yöneticisi | 96h | 96h | 4,800 | 4,800 |
| 222 | 1.3.1.2.3.3 | Başvuru Değerlendirme | 3d | 2021-01-28 A | 2021-01-30 A | 221 | 100% | İnsan Kaynakları Yöneticisi | 24h | 24h | 1,200 | 1,200 |
| 223 | 1.3.1.2.3.4 | Mülakat Yapılması | 1d | 2021-02-01 A | 2021-02-01 A | 222 | 100% | İnsan Kaynakları Yöneticisi | 8h | 8h | 400 | 400 |
| 224 | 1.3.1.2.3.5 | Maaş Belirlenmesi | 1d | 2021-02-02 A | 2021-02-02 A | 223 | 100% | İnsan Kaynakları Yöneticisi | 8h | 8h | 400 | 400 |
| 225 | 1.3.1.2.3.6 | İşe Alım | 1d | 2021-02-03 A | 2021-02-03 A | 224 | 100% | İnsan Kaynakları Yöneticisi | 8h | 8h | 400 | 400 |
| 226 | 1.3.1.3 | **MİMAR İŞE ALIMI** | 18d | 2021-01-14 A | 2021-02-03 A | 4 | 100% |  | 304h | 304h | 15,200 | 15,200 |
| 227 | 1.3.1.3.1 | **Dış mimar işe alım** | 18d | 2021-01-14 A | 2021-02-03 A |  | 100% |  | 152h | 152h | 7,600 | 7,600 |
| 228 | 1.3.1.3.1.1 | İlan Verilmesi | 1d | 2021-01-14 A | 2021-01-14 A |  | 100% | İnsan Kaynakları Yöneticisi | 8h | 8h | 400 | 400 |
| 229 | 1.3.1.3.1.2 | Başvuru Süreci | 12d | 2021-01-14 A | 2021-01-27 A | 4 | 100% | İnsan Kaynakları Yöneticisi | 96h | 96h | 4,800 | 4,800 |
| 230 | 1.3.1.3.1.3 | Başvuru Değerlendirme | 3d | 2021-01-28 A | 2021-01-30 A | 229 | 100% | İnsan Kaynakları Yöneticisi | 24h | 24h | 1,200 | 1,200 |
| 231 | 1.3.1.3.1.4 | Mülakat Yapılması | 1d | 2021-02-01 A | 2021-02-01 A | 230 | 100% | İnsan Kaynakları Yöneticisi | 8h | 8h | 400 | 400 |
| 232 | 1.3.1.3.1.5 | Maaş Belirlenmesi | 1d | 2021-02-02 A | 2021-02-02 A | 231 | 100% | İnsan Kaynakları Yöneticisi | 8h | 8h | 400 | 400 |
| 233 | 1.3.1.3.1.6 | İşe Alım | 1d | 2021-02-03 A | 2021-02-03 A | 232 | 100% | İnsan Kaynakları Yöneticisi | 8h | 8h | 400 | 400 |

| ID | WBS | Task | Duration | Start | Finish | Predecessors | Complete | Resources | Work | Actual work | Cost | Actual cost |
| --- | --- | --- | --- | --- | --- | --- | --- | --- | --- | --- | --- | --- |
| 234 | 1.3.1.3.2 | **İç mimar işe alımı** | 18d | 2021-01-14 A | 2021-02-03 A |  | 100% |  | 152h | 152h | 7,600 | 7,600 |
| 235 | 1.3.1.3.2.1 | İlan Verilmesi | 1d | 2021-01-14 A | 2021-01-14 A |  | 100% | İnsan Kaynakları Yöneticisi | 8h | 8h | 400 | 400 |
| 236 | 1.3.1.3.2.2 | Başvuru Süreci | 12d | 2021-01-14 A | 2021-01-27 A | 4 | 100% | İnsan Kaynakları Yöneticisi | 96h | 96h | 4,800 | 4,800 |
| 237 | 1.3.1.3.2.3 | Başvuru Değerlendirme | 3d | 2021-01-28 A | 2021-01-30 A | 236 | 100% | İnsan Kaynakları Yöneticisi | 24h | 24h | 1,200 | 1,200 |
| 238 | 1.3.1.3.2.4 | Mülakat Yapılması | 1d | 2021-02-01 A | 2021-02-01 A | 237 | 100% | İnsan Kaynakları Yöneticisi | 8h | 8h | 400 | 400 |
| 239 | 1.3.1.3.2.5 | Maaş Belirlenmesi | 1d | 2021-02-02 A | 2021-02-02 A | 238 | 100% | İnsan Kaynakları Yöneticisi | 8h | 8h | 400 | 400 |
| 240 | 1.3.1.3.2.6 | İşe Alım | 1d | 2021-02-03 A | 2021-02-03 A | 239 | 100% | İnsan Kaynakları Yöneticisi | 8h | 8h | 400 | 400 |
| 241 | 1.3.1.4 | **MUHASEBECİ İŞE ALIMI** | 18d | 2021-01-14 A | 2021-02-03 A | 4 | 100% |  | 152h | 152h | 7,600 | 7,600 |
| 242 | 1.3.1.4.1 | İlan Verilmesi | 1d | 2021-01-14 A | 2021-01-14 A |  | 100% | İnsan Kaynakları Yöneticisi | 8h | 8h | 400 | 400 |
| 243 | 1.3.1.4.2 | Başvuru Süreci | 12d | 2021-01-14 A | 2021-01-27 A | 4 | 100% | İnsan Kaynakları Yöneticisi | 96h | 96h | 4,800 | 4,800 |
| 244 | 1.3.1.4.3 | Başvuru Değerlendirme | 3d | 2021-01-28 A | 2021-01-30 A | 243 | 100% | İnsan Kaynakları Yöneticisi | 24h | 24h | 1,200 | 1,200 |
| 245 | 1.3.1.4.4 | Mülakat Yapılması | 1d | 2021-02-01 A | 2021-02-01 A | 244 | 100% | İnsan Kaynakları Yöneticisi | 8h | 8h | 400 | 400 |
| 246 | 1.3.1.4.5 | Maaş Belirlenmesi | 1d | 2021-02-02 A | 2021-02-02 A | 245 | 100% | İnsan Kaynakları Yöneticisi | 8h | 8h | 400 | 400 |
| 247 | 1.3.1.4.6 | İşe Alım | 1d | 2021-02-03 A | 2021-02-03 A | 246 | 100% | İnsan Kaynakları Yöneticisi | 8h | 8h | 400 | 400 |
| 248 | 1.3.1.5 | **Bina inşaatı sonrası çalışanların işe alınması** | 15d | 2022-03-08 A | 2022-03-24 A | 271 | 100% |  | 2400h | 2400h | 216,000 | 216,000 |
| 249 | 1.3.1.5.1 | Güvenlik görevlisi işe alımı | 15d | 2022-03-08 A | 2022-03-24 A |  | 100% | İnsan Kaynakları Yöneticisi; Yönetici | 240h | 240h | 21,600 | 21,600 |
| 250 | 1.3.1.5.2 | Doktor işe alımı | 15d | 2022-03-08 A | 2022-03-24 A |  | 100% | İnsan Kaynakları Yöneticisi; Yönetici | 240h | 240h | 21,600 | 21,600 |
| 251 | 1.3.1.5.3 | Anonsör işe alımı | 15d | 2022-03-08 A | 2022-03-24 A |  | 100% | İnsan Kaynakları Yöneticisi; Yönetici | 240h | 240h | 21,600 | 21,600 |
| 252 | 1.3.1.5.4 | Cankurtaran işe alımı | 15d | 2022-03-08 A | 2022-03-24 A |  | 100% | İnsan Kaynakları Yöneticisi; Yönetici | 240h | 240h | 21,600 | 21,600 |
| 253 | 1.3.1.5.5 | Eğitmenlerin işe alınması | 15d | 2022-03-08 A | 2022-03-24 A |  | 100% | İnsan Kaynakları Yöneticisi; Yönetici | 240h | 240h | 21,600 | 21,600 |
| 254 | 1.3.1.5.6 | Masörlerin işe alınması | 15d | 2022-03-08 A | 2022-03-24 A |  | 100% | İnsan Kaynakları Yöneticisi; Yönetici | 240h | 240h | 21,600 | 21,600 |
| 255 | 1.3.1.5.7 | Ofis çalışanlarının işe alınması | 15d | 2022-03-08 A | 2022-03-24 A |  | 100% | İnsan Kaynakları Yöneticisi; Yönetici | 240h | 240h | 21,600 | 21,600 |
| 256 | 1.3.1.5.8 | Bakım onarım şefinin işe alınması | 15d | 2022-03-08 A | 2022-03-24 A |  | 100% | İnsan Kaynakları Yöneticisi; Yönetici | 240h | 240h | 21,600 | 21,600 |
| 257 | 1.3.1.5.9 | Bakım onarım işçilerinin işe alınması | 15d | 2022-03-08 A | 2022-03-24 A |  | 100% | İnsan Kaynakları Yöneticisi; Yönetici | 240h | 240h | 21,600 | 21,600 |
| 258 | 1.3.1.5.10 | Temizlik görevlilerinin işe alınması | 15d | 2022-03-08 A | 2022-03-24 A |  | 100% | İnsan Kaynakları Yöneticisi; Yönetici | 240h | 240h | 21,600 | 21,600 |
| 259 | 1.3.2 | Çalışma alanlarının belirlenmesi | 10d | 2021-03-30 A | 2021-04-09 A | 7 | 100% | Endüstri Mühendisi | 80h | 80h | 8,800 | 8,800 |
| 260 | 1.3.3 | Çalışan saatlerinin belirlenmesi | 1d | 2021-03-30 A | 2021-03-30 A | 7 | 100% | Endüstri Mühendisi | 8h | 8h | 880 | 880 |

| ID | WBS | Task | Duration | Start | Finish | Predecessors | Complete | Resources | Work | Actual work | Cost | Actual cost |
| --- | --- | --- | --- | --- | --- | --- | --- | --- | --- | --- | --- | --- |
| 261 | 1.4 | **ALTYAPI ÇALIŞMALARI** | 54d | 2021-11-01 A | 2022-01-03 A | 272 | 100% |  | 864h | 864h | 43,920 | 43,920 |
| 262 | 1.4.1 | Elektrik kablolarının yerleştirilmesi | 6d | 2021-11-01 A | 2021-11-06 A |  | 100% | Elektrik Elektronik Mühendisi; İnşaat İşçisi | 96h | 96h | 4,800 | 4,800 |
| 263 | 1.4.2 | İnternet kablolarının döşenmesi | 6d | 2021-11-08 A | 2021-11-13 A | 262 | 100% | Elektrik Elektronik Mühendisi; İnşaat İşçisi | 96h | 96h | 4,800 | 4,800 |
| 264 | 1.4.3 | Su kanallarının kurulması | 6d | 2021-11-15 A | 2021-11-20 A | 263 | 100% | İnşaat İşçisi; İnşaat Mühendisi | 96h | 96h | 4,800 | 4,800 |
| 265 | 1.4.4 | Su giderlerinin oluşturulması | 6d | 2021-11-22 A | 2021-11-27 A | 264 | 100% | İnşaat Mühendisi; Tesisatçı; İnşaat İşçisi | 144h | 144h | 6,480 | 6,480 |
| 266 | 1.4.5 | Havalandırma kanallarının oluşturulması | 6d | 2021-11-29 A | 2021-12-04 A | 265 | 100% | İnşaat İşçisi; İnşaat Mühendisi | 96h | 96h | 4,800 | 4,800 |
| 267 | 1.4.6 | İzolasyon çalışmalarının yapılması | 6d | 2021-12-06 A | 2021-12-11 A | 266 | 100% | İnşaat İşçisi; İnşaat Mühendisi | 96h | 96h | 4,800 | 4,800 |
| 268 | 1.4.7 | Klimaların montajı | 6d | 2021-12-13 A | 2021-12-18 A | 267 | 100% | İnşaat İşçisi; İnşaat Mühendisi | 96h | 96h | 4,800 | 4,800 |
| 269 | 1.4.8 | Isı sistemlerinin montajı | 6d | 2021-12-20 A | 2021-12-25 A | 268 | 100% | Endüstri Mühendisi; İnşaat İşçisi | 96h | 96h | 6,960 | 6,960 |
| 270 | 1.4.9 | Elektrik motorlarının montajı | 6d | 2021-12-27 A | 2022-01-03 A | 269 | 100% | İnşaat İşçisi | 48h | 48h | 1,680 | 1,680 |
| 271 | 1.5 | **Bina İnşaatının Yapılması** | 236d | 2021-05-25 A | 2022-03-07 A |  | 100% |  | 6984h | 6984h | 437,061.19 | 367,061.19 |
| 272 | 1.5.1 | **Temelin oluşturulması** | 128d | 2021-05-25 A | 2021-10-30 A | 303 | 100% | Ahşap [1 M2]; Alçı [1 M2]; Alüminyum [1 Kg]; Çelik [1 Ton]; Çimento [1 Kg]; Demir [1 Ton]; Gaz beton [1 M3]; Hazır beton [1 M3]; Kireç [1 25 Kg]; Kiremit [1 Adet]; Mıcır [1 Ton]; Seramik [1 M2]; Tuğla [1 Adet]; Uzun boru [1 Adet]; Curuf [1 Ton]; Plywood [1 Adet]; İnşaat İşçisi; İnşaat kumu [1 10 M2]; İnşaat Mühendisi; Kısa boru [1 Adet] | 5016h | 5016h | 335,321.19 | 265,321.19 |
| 273 | 1.5.1.1 | Hafriyat aplikasyonu yapılması | 6d | 2021-05-25 A | 2021-05-31 A |  | 100% | İnşaat İşçisi; İnşaat Mühendisi; İş Güvenlik Uzmanı | 144h | 144h | 7,440 | 7,440 |
| 274 | 1.5.1.2 | Hafriyat yapılması | 10d | 2021-06-01 A | 2021-06-11 A | 273 | 100% | İnşaat İşçisi; İnşaat Mühendisi; İş Güvenlik Uzmanı; Kazı Çalışmaları [0.1%] | 240h | 240h | 27,600 | 12,400 |
| 275 | 1.5.1.3 | Hafriyat nakliyesinin yapılması | 10d | 2021-06-01 A | 2021-06-11 A | 273 | 100% | İnşaat İşçisi; Hafriyat Nakliyesi [0.1%] | 80h | 80h | 57,600 | 2,800 |
| 276 | 1.5.1.4 | Temel altı mıcır ve drenaj işleri yapılması | 12d | 2021-06-12 A | 2021-06-25 A | 275 | 100% | İnşaat İşçisi | 96h | 96h | 3,360 | 3,360 |
| 277 | 1.5.1.5 | Mıcır tesviyesi ve temel altı grobeton işlerinin yapılması | 10d | 2021-06-26 A | 2021-07-07 A | 276 | 100% | İnşaat İşçisi | 80h | 80h | 2,800 | 2,800 |
| 278 | 1.5.1.6 | Radye temel altı izolasyon hazırlıklarının yapılması | 13d | 2021-07-08 A | 2021-07-30 A | 277 | 100% | İnşaat İşçisi; İnşaat Mühendisi; İş Güvenlik Uzmanı | 312h | 312h | 16,120 | 16,120 |
| 279 | 1.5.1.7 | Temel altı bohçalama yalıtımının yapılması | 8d | 2021-07-31 A | 2021-08-09 A | 278 | 100% | İnşaat İşçisi; İnşaat Mühendisi; İş Güvenlik Uzmanı | 192h | 192h | 9,920 | 9,920 |
| 280 | 1.5.1.8 | Koruma betonunun yapılması | 9d | 2021-08-10 A | 2021-08-19 A | 279 | 100% | İnşaat İşçisi; İnşaat Mühendisi; İş Güvenlik Uzmanı | 216h | 216h | 11,160 | 11,160 |
| 281 | 1.5.1.9 | Radye temel demirlerinin döşenmesi | 12d | 2021-08-20 A | 2021-09-03 A | 280 | 100% | İnşaat İşçisi; İnşaat Mühendisi; İş Güvenlik Uzmanı | 288h | 288h | 14,880 | 14,880 |
| 282 | 1.5.1.10 | Temel betonunun dökülmesi | 15d | 2021-09-04 A | 2021-09-21 A | 281 | 100% | İnşaat İşçisi; İnşaat Mühendisi; İş Güvenlik Uzmanı | 360h | 360h | 18,600 | 18,600 |
| 283 | 1.5.1.11 | Subasman perdelerinin imalinin yapılması | 10d | 2021-09-22 A | 2021-10-02 A | 282 | 100% | İnşaat İşçisi; İnşaat Mühendisi; İş Güvenlik Uzmanı | 240h | 240h | 12,400 | 12,400 |
| 284 | 1.5.1.12 | Dolgu ve sıkıştırma yapılaması | 7d | 2021-10-04 A | 2021-10-11 A | 283 | 100% | İnşaat İşçisi; İnşaat Mühendisi; İş Güvenlik Uzmanı | 168h | 168h | 8,680 | 8,680 |
| 285 | 1.5.1.13 | Kompaktörlü sıkıştırma yapılması | 8d | 2021-10-12 A | 2021-10-20 A | 284 | 100% | İnşaat İşçisi; İnşaat Mühendisi; İş Güvenlik Uzmanı | 192h | 192h | 9,920 | 9,920 |
| 286 | 1.5.1.14 | Beton dökümüne hazırlanmış hasırlı grobeton yapımı | 8d | 2021-10-21 A | 2021-10-30 A | 285 | 100% | İnşaat İşçisi; İnşaat Mühendisi; İş Güvenlik Uzmanı | 192h | 192h | 9,920 | 9,920 |
| 287 | 1.5.1.15 | Asmolen sistem tabliye kalıbının yapılması | 7d | 2021-05-25 A | 2021-06-01 A |  | 100% | İnşaat İşçisi; İnşaat Mühendisi; İş Güvenlik Uzmanı | 168h | 168h | 8,680 | 8,680 |
| 288 | 1.5.2 | Kolon kalıbı yapılması | 4d | 2021-11-01 A | 2021-11-04 A | 272 | 100% | İnşaat İşçisi; İş Güvenlik Uzmanı; İnşaat kumu [1 10 M2]; Demir [1 Ton] | 64h | 64h | 9,580 | 9,580 |
| 289 | 1.5.3 | Beton dökülmesine hazırlanmış olan kalıp dökümü | 5d | 2021-11-05 A | 2021-11-10 A | 288 | 100% | İnşaat İşçisi; İş Güvenlik Uzmanı | 80h | 80h | 3,600 | 3,600 |
| 290 | 1.5.4 | Tabliye betonunun dökülmesi | 8d | 2021-11-11 A | 2021-11-19 A | 289 | 100% | İnşaat İşçisi; İnşaat Mühendisi; İş Güvenlik Uzmanı | 192h | 192h | 9,920 | 9,920 |
| 291 | 1.5.5 | Tuğla duvar hazırlıklıklarının yapılması | 3d | 2021-11-20 A | 2021-11-23 A | 290 | 100% | İnşaat İşçisi; İnşaat Mühendisi; İş Güvenlik Uzmanı | 72h | 72h | 3,720 | 3,720 |
| 292 | 1.5.6 | Tuğla duvar imalatının yapılması | 18d | 2021-11-24 A | 2021-12-14 A | 291 | 100% | İnşaat İşçisi; İnşaat Mühendisi; İş Güvenlik Uzmanı | 432h | 432h | 22,320 | 22,320 |
| 293 | 1.5.7 | Lentolar ve duvar üstü dolguların yapılması | 15d | 2021-12-15 A | 2021-12-31 A | 292 | 100% | İnşaat İşçisi; İnşaat Mühendisi; İş Güvenlik Uzmanı | 360h | 360h | 18,600 | 18,600 |
| 294 | 1.5.8 | Havuz yüzeyine uygun su yalıtımının yapılması | 1d | 2022-01-03 A | 2022-01-03 A | 293 | 100% | İnşaat İşçisi; İnşaat Mühendisi | 16h | 16h | 800 | 800 |
| 295 | 1.5.9 | Havuz yalıtımının kontrol edilmesi | 15d | 2022-01-04 A | 2022-01-20 A | 294 | 100% | Tesisatçı | 120h | 120h | 4,200 | 4,200 |
| 296 | 1.5.10 | Havuz kaplama işlemleri | 3d | 2022-01-21 A | 2022-01-24 A | 295 | 100% | İnşaat İşçisi | 24h | 24h | 840 | 840 |
| 297 | 1.5.11 | İç duvarların örülmesi | 10d | 2022-01-25 A | 2022-02-04 A | 296 | 100% | Elektrik Elektronik Mühendisi; İnşaat İşçisi; İnşaat Mühendisi; İş Güvenlik Uzmanı; Tesisatçı | 400h | 400h | 20,400 | 20,400 |
| 298 | 1.5.12 | Boya işlemleri | 6d | 2022-02-05 A | 2022-02-11 A | 297 | 100% | Boyacı | 48h | 48h | 2,160 | 2,160 |
| 299 | 1.5.13 | Pencerelerin yerleştirilmesi | 5d | 2022-02-12 A | 2022-02-17 A | 298 | 100% | Montaj İşçisi | 40h | 40h | 1,400 | 1,400 |
| 300 | 1.5.14 | Fayansların döşenmesi | 15d | 2022-02-18 A | 2022-03-07 A | 299 | 100% | İnşaat İşçisi | 120h | 120h | 4,200 | 4,200 |

| ID | WBS | Task | Duration | Start | Finish | Predecessors | Complete | Resources | Work | Actual work | Cost | Actual cost |
| --- | --- | --- | --- | --- | --- | --- | --- | --- | --- | --- | --- | --- |
| 301 | 1.6 | **MALZEME TEDARİĞİ** | 278d | 2021-04-28 A | 2022-04-04 A |  | 100% |  | 256h | 256h | 116,775 | 116,775 |
| 302 | 1.6.1 | Bina inşaatı için malzemelerin seçilmesi ve satın alınması | 1d | 2021-04-28 A | 2021-04-28 A | 8 | 100% | Muhasebeci; Yönetici | 16h | 16h | 1,400 | 1,400 |
| 303 | 1.6.2 | Bina inşaatı için malzemelerin tedariği | 18d | 2021-04-28 A | 2021-05-24 A | 8 | 100% | Tedarikçi [0.1%] |  |  | 78,000 | 78,000 |
| 304 | 1.6.3 | Havuz malzemelerinin seçimi ve satın alınması | 1d | 2022-03-08 A | 2022-03-08 A | 271 | 100% | Muhasebeci; Yönetici | 16h | 16h | 1,400 | 1,400 |
| 305 | 1.6.4 | Havuz malzemelerinin tedariği | 18d | 2022-03-08 A | 2022-03-28 A | 271 | 100% | Tedarikçi [0.1%] |  |  | 2,150 | 2,150 |
| 306 | 1.6.5 | Spor salonu malzemelerinin seçimleri ve satın alınması | 1d | 2022-03-08 A | 2022-03-08 A | 271 | 100% | Muhasebeci; Yönetici | 16h | 16h | 1,400 | 1,400 |
| 307 | 1.6.6 | Spor salonu malzemelerinin tedariği | 24d | 2022-03-08 A | 2022-04-04 A | 271 | 100% | Tedarikçi [0.1%] |  |  | 3,600 | 3,600 |
| 308 | 1.6.7 | Jakuzi seçimi | 1d | 2022-03-08 A | 2022-03-08 A | 271 | 100% | Muhasebeci; Yönetici | 16h | 16h | 1,400 | 1,400 |
| 309 | 1.6.8 | Jakuzi tedariği | 12d | 2022-03-08 A | 2022-03-21 A | 271 | 100% | Tedarikçi [0.1%] |  |  | 750 | 750 |
| 310 | 1.6.9 | Sauna odası malzemelerinin seçilmesi ve satın alınması | 1d | 2022-03-08 A | 2022-03-08 A | 271 | 100% | Muhasebeci; Yönetici | 16h | 16h | 1,400 | 1,400 |
| 311 | 1.6.10 | Sauna odası malzemelerinin tedariği | 6d | 2022-03-08 A | 2022-03-14 A | 271 | 100% | Tedarikçi [0.1%] |  |  | 300 | 300 |
| 312 | 1.6.11 | Buhar odası malzemelerinin seçilmesi ve satın alınması | 1d | 2022-03-08 A | 2022-03-08 A | 271 | 100% | Muhasebeci; Yönetici | 16h | 16h | 1,400 | 1,400 |
| 313 | 1.6.12 | Buhar odası malzemelerinin tedariği | 6d | 2022-03-08 A | 2022-03-14 A | 271 | 100% | Tedarikçi [0.1%] |  |  | 250 | 250 |
| 314 | 1.6.13 | Masaj odası malzemelerinin seçilmesi ve satın alınması | 1d | 2022-03-08 A | 2022-03-08 A | 271 | 100% | Muhasebeci; Yönetici | 16h | 16h | 1,400 | 1,400 |
| 315 | 1.6.14 | Masaj odası malzemelerinin tedariği | 6d | 2022-03-08 A | 2022-03-14 A | 271 | 100% | Tedarikçi [0.1%] |  |  | 375 | 375 |
| 316 | 1.6.15 | Soyunma odalarının malzemelerinin seçilmesi ve satın alınması | 1d | 2022-03-08 A | 2022-03-08 A | 271 | 100% | Muhasebeci; Yönetici | 16h | 16h | 1,400 | 1,400 |
| 317 | 1.6.16 | Soyunma odalarının malzemelerinin tedariği | 6d | 2022-03-08 A | 2022-03-14 A | 271 | 100% | Tedarikçi [0.1%] |  |  | 1,800 | 1,800 |
| 318 | 1.6.17 | Seyirci tribünleri malzemelerinin seçilmesi ve satın alınması | 1d | 2022-03-08 A | 2022-03-08 A | 271 | 100% | Muhasebeci; Yönetici | 16h | 16h | 1,400 | 1,400 |
| 319 | 1.6.18 | Seyirci tribünleri malzemelerinin tedariği | 6d | 2022-03-08 A | 2022-03-14 A | 271 | 100% | Tedarikçi [0.1%] |  |  | 2,450 | 2,450 |
| 320 | 1.6.19 | Revir malzemelerinin seçilmesi ve satın alınması | 1d | 2022-03-08 A | 2022-03-08 A | 271 | 100% | Muhasebeci; Yönetici | 16h | 16h | 1,400 | 1,400 |
| 321 | 1.6.20 | Revir malzemelerinin tedariği | 6d | 2022-03-08 A | 2022-03-14 A | 271 | 100% | Tedarikçi [0.1%] |  |  | 380 | 380 |
| 322 | 1.6.21 | Hakem odası malzemelerinin seçimi ve satın alınması | 1d | 2022-03-08 A | 2022-03-08 A | 271 | 100% | Muhasebeci; Yönetici | 16h | 16h | 1,400 | 1,400 |
| 323 | 1.6.22 | Hakem odası malzemelerinin tedariği | 6d | 2022-03-08 A | 2022-03-14 A | 271 | 100% | Tedarikçi [0.1%] |  |  | 820 | 820 |
| 324 | 1.6.23 | Çalışan odalarının malzeme seçimleri ve satın alınması | 1d | 2022-03-08 A | 2022-03-08 A | 271 | 100% | Muhasebeci; Yönetici | 16h | 16h | 1,400 | 1,400 |
| 325 | 1.6.24 | Çalışan odaları için malzeme tedariği | 6d | 2022-03-08 A | 2022-03-14 A | 271 | 100% | Tedarikçi [0.1%] |  |  | 750 | 750 |
| 326 | 1.6.25 | Malzeme odası için malzeme seçimi ve satın alınması | 1d | 2022-03-08 A | 2022-03-08 A | 271 | 100% | Muhasebeci; Yönetici | 16h | 16h | 1,400 | 1,400 |
| 327 | 1.6.26 | Malzeme odası için malzeme tedariği | 6d | 2022-03-08 A | 2022-03-14 A | 271 | 100% | Tedarikçi [0.1%] |  |  | 340 | 340 |
| 328 | 1.6.27 | Lavabolar için malzeme seçimi ve satın alınması | 1d | 2022-03-08 A | 2022-03-08 A | 271 | 100% | Muhasebeci; Yönetici | 16h | 16h | 1,400 | 1,400 |
| 329 | 1.6.28 | Lavabolar için malzeme tedariği | 6d | 2022-03-08 A | 2022-03-14 A | 271 | 100% | Tedarikçi [0.1%] |  |  | 1,200 | 1,200 |
| 330 | 1.6.29 | Kantin malzemelerinin seçilmesi ve satın alınması | 1d | 2022-03-08 A | 2022-03-08 A | 271 | 100% | Muhasebeci; Yönetici | 16h | 16h | 1,400 | 1,400 |
| 331 | 1.6.30 | Kantin malzemelerinin tedariği | 6d | 2022-03-08 A | 2022-03-14 A | 271 | 100% | Tedarikçi [0.1%] |  |  | 260 | 260 |
| 332 | 1.6.31 | Ofis malzemelerinin seçilmesi ve satın alınması | 1d | 2022-03-08 A | 2022-03-08 A | 271 | 100% | Muhasebeci; Yönetici | 16h | 16h | 1,400 | 1,400 |
| 333 | 1.6.32 | Ofis malzemelerinin tedariği | 6d | 2022-03-08 A | 2022-03-14 A | 271 | 100% | Tedarikçi [0.1%] |  |  | 950 | 950 |

| ID | WBS | Task | Duration | Start | Finish | Predecessors | Complete | Resources | Work | Actual work | Cost | Actual cost |
| --- | --- | --- | --- | --- | --- | --- | --- | --- | --- | --- | --- | --- |
| 334 | 1.7 | **MONTAJLAMA İŞLEMLERİ VE ÜRÜN YERLEŞTİRMELERİ** | 27d | 2022-04-05 A | 2022-05-10 A | 301 | 100% |  | 248h | 248h | 8,680 | 8,680 |
| 335 | 1.7.1 | Kapıların yerleştirilmesi | 4d | 2022-04-05 A | 2022-04-08 A |  | 100% | Montaj İşçisi | 32h | 32h | 1,120 | 1,120 |
| 336 | 1.7.2 | Aydınlatma ışıklarının montajı | 3d | 2022-04-05 A | 2022-04-07 A |  | 100% | Montaj İşçisi | 24h | 24h | 840 | 840 |
| 337 | 1.7.3 | Rafların montajı | 1d | 2022-04-08 A | 2022-04-08 A | 336 | 100% | Montaj İşçisi | 8h | 8h | 280 | 280 |
| 338 | 1.7.4 | Dolapların montajı | 1d | 2022-04-09 A | 2022-04-09 A | 337 | 100% | Montaj İşçisi | 8h | 8h | 280 | 280 |
| 339 | 1.7.5 | Jakuzinin montajı | 1d | 2022-04-11 A | 2022-04-11 A | 338 | 100% | Montaj İşçisi | 8h | 8h | 280 | 280 |
| 340 | 1.7.6 | Giyinme kabinlerinin montajı | 1d | 2022-04-12 A | 2022-04-12 A | 339 | 100% | Montaj İşçisi | 8h | 8h | 280 | 280 |
| 341 | 1.7.7 | Tuvalet kabinlerinin montajı | 1d | 2022-04-13 A | 2022-04-13 A | 340 | 100% | Montaj İşçisi | 8h | 8h | 280 | 280 |
| 342 | 1.7.8 | Aynaların sabitlenmesi | 1d | 2022-04-14 A | 2022-04-14 A | 341 | 100% | Montaj İşçisi | 8h | 8h | 280 | 280 |
| 343 | 1.7.9 | Havuz malzemelerinin montajlanması | 3d | 2022-04-15 A | 2022-04-18 A | 342 | 100% | Montaj İşçisi | 24h | 24h | 840 | 840 |
| 344 | 1.7.10 | Jakuzi odası malzemelerinin montajlanması | 1d | 2022-04-19 A | 2022-04-19 A | 343 | 100% | Montaj İşçisi | 8h | 8h | 280 | 280 |
| 345 | 1.7.11 | Sauna odası malzemelerinin montajlanması | 1d | 2022-04-20 A | 2022-04-20 A | 344 | 100% | Montaj İşçisi | 8h | 8h | 280 | 280 |
| 346 | 1.7.12 | Buhar odası malzemelerinin montajlanması | 1d | 2022-04-21 A | 2022-04-21 A | 345 | 100% | Montaj İşçisi | 8h | 8h | 280 | 280 |
| 347 | 1.7.13 | Masaj odası malzemelerinin montajlanması | 1d | 2022-04-22 A | 2022-04-22 A | 346 | 100% | Montaj İşçisi | 8h | 8h | 280 | 280 |
| 348 | 1.7.14 | Soyunma odalarının malzemelerinin montajlanması | 1d | 2022-04-25 A | 2022-04-25 A | 347 | 100% | Montaj İşçisi | 8h | 8h | 280 | 280 |
| 349 | 1.7.15 | Seyirci tribünleri malzemelerinin montajlanması | 2d | 2022-04-26 A | 2022-04-27 A | 348 | 100% | Montaj İşçisi | 16h | 16h | 560 | 560 |
| 350 | 1.7.16 | Revir odası malzemelerinin montajlanması | 1d | 2022-04-28 A | 2022-04-28 A | 349 | 100% | Montaj İşçisi | 8h | 8h | 280 | 280 |
| 351 | 1.7.17 | Hakem odası malzemelerinin montajlanması | 1d | 2022-04-29 A | 2022-04-29 A | 350 | 100% | Montaj İşçisi | 8h | 8h | 280 | 280 |
| 352 | 1.7.18 | Çalışan odaları malzemelerinin montajlanması | 1d | 2022-04-30 A | 2022-04-30 A | 351 | 100% | Montaj İşçisi | 8h | 8h | 280 | 280 |
| 353 | 1.7.19 | Malzeme odası malzemelerinin montajlanması | 1d | 2022-05-05 A | 2022-05-05 A | 352 | 100% | Montaj İşçisi | 8h | 8h | 280 | 280 |
| 354 | 1.7.20 | Tuvalet malzemelerinin montajlanması | 1d | 2022-05-06 A | 2022-05-06 A | 353 | 100% | Montaj İşçisi | 8h | 8h | 280 | 280 |
| 355 | 1.7.21 | Kantin malzemelerinin montajlanması | 1d | 2022-05-07 A | 2022-05-07 A | 354 | 100% | Montaj İşçisi | 8h | 8h | 280 | 280 |
| 356 | 1.7.22 | Ofis malzemelerinin montajlanması | 2d | 2022-05-09 A | 2022-05-10 A | 355 | 100% | Montaj İşçisi | 16h | 16h | 560 | 560 |
| 357 | 1.8 | **Reklam Yapılması** | 16d | 2022-05-11 A | 2022-05-30 A | 334 | 100% |  | 128h | 128h | 9,600 | 9,600 |
| 358 | 1.8.1 | Televizyon Kanallarına haber verilmesi | 2d | 2022-05-11 A | 2022-05-12 A |  | 100% | Medya Departmanı | 16h | 16h | 1,200 | 1,200 |
| 359 | 1.8.2 | Radyo kanallarına haber verilmesi | 2d | 2022-05-13 A | 2022-05-14 A | 358 | 100% | Medya Departmanı | 16h | 16h | 1,200 | 1,200 |
| 360 | 1.8.3 | Broşürün hazırlanması | 3d | 2022-05-16 A | 2022-05-18 A | 359 | 100% | Medya Departmanı | 24h | 24h | 1,800 | 1,800 |
| 361 | 1.8.4 | Broşürün dağıtılması | 6d | 2022-05-20 A | 2022-05-26 A | 360 | 100% | Medya Departmanı | 48h | 48h | 3,600 | 3,600 |
| 362 | 1.8.5 | Reklam panolarına reklam verilmesi | 1d | 2022-05-27 A | 2022-05-27 A | 361 | 100% | Medya Departmanı | 8h | 8h | 600 | 600 |
| 363 | 1.8.6 | Sosyal medya üzerinden reklam yapılması | 1d | 2022-05-28 A | 2022-05-28 A | 362 | 100% | Medya Departmanı | 8h | 8h | 600 | 600 |
| 364 | 1.8.7 | Açılışın duyurulması | 1d | 2022-05-30 A | 2022-05-30 A | 363 | 100% | Medya Departmanı | 8h | 8h | 600 | 600 |

| ID | WBS | Task | Duration | Start | Finish | Predecessors | Complete | Resources | Work | Actual work | Cost | Actual cost |
| --- | --- | --- | --- | --- | --- | --- | --- | --- | --- | --- | --- | --- |
| 365 | 1.9 | **AÇILIŞ TÖRENİ YAPILMASI** | 8d | 2022-05-31 A | 2022-06-08 A | 357 | 100% |  | 112h | 112h | 14,840 | 14,840 |
| 366 | 1.9.1 | Üst düzey yöneticilerin çağırılması | 1d | 2022-05-31 A | 2022-05-31 A |  | 100% | Medya Departmanı; Yönetim | 16h | 16h | 2,120 | 2,120 |
| 367 | 1.9.2 | Halkın çağırılması | 1d | 2022-06-01 A | 2022-06-01 A | 366 | 100% | Medya Departmanı; Yönetim | 16h | 16h | 2,120 | 2,120 |
| 368 | 1.9.3 | İkramların sipariş verilmesi | 1d | 2022-06-02 A | 2022-06-02 A | 367 | 100% | Medya Departmanı; Yönetim | 16h | 16h | 2,120 | 2,120 |
| 369 | 1.9.4 | İkramların hazırlanması | 1d | 2022-06-03 A | 2022-06-03 A | 368 | 100% | Medya Departmanı; Yönetim | 16h | 16h | 2,120 | 2,120 |
| 370 | 1.9.5 | Müzik sisteminin kurulması | 2d | 2022-06-04 A | 2022-06-06 A | 369 | 100% | Medya Departmanı; Yönetim | 16h | 16h | 2,120 | 2,120 |
| 371 | 1.9.6 | Proje hakkında bilgilendirme yapılması | 1d | 2022-06-07 A | 2022-06-07 A | 370 | 100% | Medya Departmanı; Yönetim | 16h | 16h | 2,120 | 2,120 |
| 372 | 1.9.7 | Faaliyete geçirilmesi | 1d | 2022-06-08 A | 2022-06-08 A | 371 | 100% | Medya Departmanı; Yönetim | 16h | 16h | 2,120 | 2,120 |
